# caArray2.0-DeploymentActivities

Schedule from MS Project, 2007-11-16 to 2007-12-17.
Sony Electronics, Inc.

## Calendars

- Standard: Mon-Fri 08:00-12:00, 13:00-17:00; Sat-Sun off.

## Resources

| Resource |
| --- |
| juli |
| jill |
| mduncan |

## Schedule

| ID | WBS | Task | Type | Duration | Start | Finish | Predecessors | Total slack | Free slack | Constraint | Resources | Work |
| --- | --- | --- | --- | --- | --- | --- | --- | --- | --- | --- | --- | --- |
| 1 | 1 | **Configuration and Change Management** |  | 22d? | 2007-11-16 | 2007-12-17 |  | 0d |  |  |  | 544h |
| 2 | 1.1 | **Documentation** |  | 22d? | 2007-11-16 | 2007-12-17 |  | 0d |  |  |  | 464h |
| 3 | 1.1.1 | End User Guide |  | 21d? | 2007-11-16 | 2007-12-14 |  | 1d |  | finish no earlier than 2007-12-14 | jill | 168h |
| 4 | 1.1.2 | Online Help |  | 17d? | 2007-11-16 | 2007-12-10 |  | 15d |  | finish no earlier than 2007-12-10 | jill | 136h |
| 5 | 1.5.1.7.3.1 | Technical Guide |  | 1d? | 2007-12-03 | 2007-12-03 |  | -91d | 0d |  |  |  |
| 6 | 1.1.4 | Tech Guide |  | 10d? | 2007-12-04 | 2007-12-17 | 5 | 0d |  | finish no earlier than 2007-12-14 | jill | 80h |
| 7 | 1.5.1.7.3.3 | Installation Guide |  | 1d? | 2007-12-03 | 2007-12-03 |  | -91d | 0d |  |  |  |
| 8 | 1.1.6 | Installation Guide |  | 10d? | 2007-12-04 | 2007-12-17 | 7 | 0d |  | finish no earlier than 2007-12-14 | jill | 80h |
| 9 | 1.2 | **caArray website (zope site) update** |  | 19d? | 2007-11-19 | 2007-12-14 |  | 2d |  |  |  | 24h |
| 10 | 1.2.1 | Initial Content Change |  | 3d? | 2007-11-19 | 2007-11-21 |  | 17d |  | start no earlier than 2007-11-19 | juli | 24h |
| 11 | 1.2.2 | Format Change |  | 1d? | 2007-11-28 | 2007-11-28 |  | 6d | 0d | finish no earlier than 2007-11-28 |  |  |
| 12 | 1.2.3 | Release Content Change #1 to DEV |  | 1d? | 2007-11-29 | 2007-11-29 | 11 | 6d | 0d |  |  |  |
| 13 | 1.2.4 | Website Review #1 |  | 1d? | 2007-11-30 | 2007-11-30 | 12 | 6d | 0d |  |  |  |
| 14 | 1.2.5 | Content Update |  | 1d? | 2007-12-03 | 2007-12-03 | 13 | 6d | 0d |  |  |  |
| 15 | 1.2.6 | Release Content Change #2 to DEV |  | 1d? | 2007-12-04 | 2007-12-04 | 14 | 6d | 0d |  |  |  |
| 16 | 1.2.7 | Website Review #2 |  | 1d? | 2007-12-05 | 2007-12-05 | 15 | 6d | 0d |  |  |  |
| 17 | 1.2.8 | Website Approval |  | 1d? | 2007-12-06 | 2007-12-06 | 16 | 7d | 0d |  |  |  |
| 18 | 1.2.9 | Milestone: Release Content to DEV | milestone | 0d | 2007-12-06 | 2007-12-06 | 17 | 7d | 0d |  |  |  |
| 19 | 1.2.10 | Milestone: Release Content to QA | milestone | 0d | 2007-12-06 | 2007-12-06 | 18 | 7d | 0d |  |  |  |
| 20 | 1.2.11 | Milestone: Release Content to Stage | milestone | 0d | 2007-12-06 | 2007-12-06 | 19 | 7d | 5d | start no earlier than 2007-12-06 |  |  |
| 21 | 1.2.12 | Milestone: Release Content to PRODUCTION | milestone | 0d | 2007-12-14 | 2007-12-14 | 20 | 2d |  | start no earlier than 2007-12-14 |  |  |
| 22 | 1.3 | **Download Center Update** |  | 12d? | 2007-11-28 | 2007-12-14 |  | 2d |  |  |  | 56h |
| 23 | 1.3.1 | Update License Statement (reflect 2.0) |  | 1d? | 2007-11-28 | 2007-11-28 |  | 13d |  | start no earlier than 2007-11-28 | mduncan | 8h |
| 24 | 1.3.2 | Website content change |  | 3d? | 2007-11-28 | 2007-11-30 |  | 11d |  | finish no earlier than 2007-11-30 | mduncan | 24h |
| 25 | 1.3.3 | Add archives page (caArray 1.6 info) |  | 3d? | 2007-11-28 | 2007-11-30 |  | 11d | 1d | finish no earlier than 2007-11-30 | mduncan | 24h |
| 26 | 1.3.4 | Milestone: Release Content to DEV | milestone | 0d | 2007-12-04 | 2007-12-04 | 25 | 10d | 1d | start no earlier than 2007-12-04 |  |  |
| 27 | 1.3.5 | Milestone: Release Content to QA | milestone | 0d | 2007-12-05 | 2007-12-05 | 26 | 9d | 1d | start no earlier than 2007-12-05 |  |  |
| 28 | 1.3.6 | Milestone: Release Content to Stage | milestone | 0d | 2007-12-06 | 2007-12-06 | 27 | 8d | 6d | start no earlier than 2007-12-06 |  |  |
| 29 | 1.3.7 | Milestone: Release Content to PRODUCTION | milestone | 0d | 2007-12-14 | 2007-12-14 | 28 | 2d |  | start no earlier than 2007-12-14 |  |  |

| ID | WBS | Task | Type | Duration | Start | Finish | Predecessors | Total slack | Free slack | Constraint |
| --- | --- | --- | --- | --- | --- | --- | --- | --- | --- | --- |
| 30 | 1.4 | **gForge Update** |  | 2d | 2007-12-13 | 2007-12-14 |  | 1d |  |  |
| 31 | 1.4.1 | Release documentation package to gForge |  | 1d | 2007-12-13 | 2007-12-13 |  | 2d |  | start no earlier than 2007-12-13 |
| 32 | 1.4.2 | Release release notes to gForge |  | 1d | 2007-12-13 | 2007-12-13 |  | 2d |  | start no earlier than 2007-12-13 |
| 33 | 1.4.3 | Release source file to gForge |  | 1d | 2007-12-14 | 2007-12-14 |  | 1d |  | start no earlier than 2007-12-14 |
| 34 | 1.5 | **Release Announcement to the Community** |  | 1d? | 2007-12-13 | 2007-12-14 |  | 2d |  |  |
| 35 | 1.5.1 | Draft caArray 2.0 Release Announcement |  | 1d? | 2007-12-13 | 2007-12-13 |  | 2d |  | start no earlier than 2007-12-13 |
| 36 | 1.5.2 | Milestone: Distribute caArray 2.0 Release Announcement | milestone | 0d | 2007-12-14 | 2007-12-14 |  | 2d |  | start no earlier than 2007-12-14 |
| 37 | 2 | **caArray Data Migration Activities (1.6 to 2.0)** |  | 14d? | 2007-11-26 | 2007-12-14 |  | 2d |  |  |
| 38 | 2.1 | Document caArray data migration design |  | 10d? | 2007-11-26 | 2007-12-07 |  | 6d |  | finish no earlier than 2007-12-07 |
| 39 | 2.2 | Implement data migration |  | 3d? | 2007-11-30 | 2007-12-04 |  | 7d | 0d | start no earlier than 2007-11-30 |
| 40 | 2.3 | Milestone: Load migrated data on DEV | milestone | 0d | 2007-12-04 | 2007-12-04 | 39 | 7d | 0d |  |
| 41 | 2.4 | Test data migration |  | 1d? | 2007-12-05 | 2007-12-05 | 40 | 7d | 0d |  |
| 42 | 2.5 | Milestone: Load migrated data on QA | milestone | 0d | 2007-12-05 | 2007-12-05 | 41 | 7d | 0d |  |
| 43 | 2.6 | QA test data migration |  | 1d? | 2007-12-06 | 2007-12-06 | 42 | 7d |  |  |
| 44 | 2.7 | Milestone: caArray data migration on Staging | milestone | 0d | 2007-12-14 | 2007-12-14 |  | 2d |  | start no earlier than 2007-12-14 |
| 45 | 2.8 | Milestone: caArray data migration on Production | milestone | 0d | 2007-12-14 | 2007-12-14 |  | 2d |  | start no earlier than 2007-12-14 |
