# e2_sketch

Schedule from MS Project, 2007-07-31 to 2007-08-13.
NCI

## Calendars

- Standard: Mon-Fri 08:00-12:00, 13:00-17:00; Sat-Sun off.

## Resources

| Resource |
| --- |
| jpike |
| rsrinivasa |
| bmason |
| etavela |
| etave;a |
| tparnell |
| smatyas |
| rsrinvasa |
| jpke |

## Schedule

| ID | WBS | Task | Type | Duration | Start | Finish | Total slack | Resources | Work |
| --- | --- | --- | --- | --- | --- | --- | --- | --- | --- |
| 1 | 1 | **Requirements** |  | 5d? | 2007-07-31 | 2007-08-06 | 5d |  |  |
| 2 | 1.1 | Use Case: Manage Permissions |  | 1d? | 2007-07-31 | 2007-07-31 | 9d |  |  |
| 3 | 1.2 | Capture SNP Special Requirements |  | 1d? | 2007-07-31 | 2007-07-31 | 9d |  |  |
| 4 | 1.3 | Wireframes or UX for Manage Permissions |  | 5d | 2007-07-31 | 2007-08-06 | 5d |  |  |
| 5 | 2 | **Analysis and Design** |  | 5d | 2007-07-31 | 2007-08-06 | 5d |  | 280h |
| 6 | 2.1 | UC Design: Manage Project Permissions |  | 3d | 2007-07-31 | 2007-08-02 | 7d | etavela | 24h |
| 7 | 2.2 | UC Design: Validate Project Data Files |  | 2d | 2007-07-31 | 2007-08-01 | 8d | etavela | 16h |
| 8 | 2.3 | UC Design: Login |  | 1d | 2007-07-31 | 2007-07-31 | 9d | jpike | 8h |
| 9 | 2.4 | Logical Model Final Draft |  | 2d | 2007-07-31 | 2007-08-01 | 8d | rsrinivasa | 16h |
| 10 | 2.5 | UC Design: Validate |  | 1d | 2007-07-31 | 2007-07-31 | 9d | etavela | 8h |
| 11 | 2.6 | Subsystem Design: FileAccessService |  | 4d | 2007-07-31 | 2007-08-03 | 6d | jpike | 32h |
| 12 | 2.7 | Subsystem Design: MageTabParser -- Validation |  | 4d | 2007-07-31 | 2007-08-03 | 6d | bmason | 32h |
| 13 | 2.8 | Subsystem Design: ArrayDataService -- Validation |  | 2d | 2007-07-31 | 2007-08-01 | 8d | bmason | 16h |
| 14 | 2.9 | Subsystem Design: ArrayDesignService -- Validation |  | 2d | 2007-07-31 | 2007-08-01 | 8d | bmason | 16h |
| 15 | 2.10 | Mechanism Design: UI Framework | milestone | 0d | 2007-07-31 | 2007-07-31 | 10d | tparnell |  |
| 16 | 2.11 | Update Software Architecture Document |  | 2d | 2007-07-31 | 2007-08-01 | 8d | etavela | 16h |
| 17 | 2.12 | External Review: Grid API |  | 1d | 2007-07-31 | 2007-07-31 | 9d |  |  |
| 18 | 2.13 | Subsystem Design: Remote API Grid Implementation |  | 5d | 2007-07-31 | 2007-08-06 | 5d | rsrinivasa | 40h |
| 19 | 2.14 | Subsystem Design: PermissionsManagement |  | 3d | 2007-07-31 | 2007-08-02 | 7d | tparnell | 24h |
| 20 | 2.15 | Object Access Authorization Mechanism |  | 4d | 2007-07-31 | 2007-08-03 | 6d | tparnell | 32h |
| 21 | 3 | **Implementation** |  | 10d? | 2007-07-31 | 2007-08-13 | 0d |  | 512h |
| 22 | 3.1 | **E1 Completion** |  | 4d | 2007-07-31 | 2007-08-03 | 6d |  | 160h |
| 23 | 3.1.1 | Complete Hibernate Mappings |  | 4d | 2007-07-31 | 2007-08-03 | 6d | rsrinivasa; tparnell | 64h |
| 24 | 3.1.2 | Remote Java API |  | 3d | 2007-07-31 | 2007-08-02 | 7d | etavela; smatyas | 48h |
| 25 | 3.1.3 | Complete MAGE-TAB parsing |  | 3d | 2007-07-31 | 2007-08-02 | 7d | bmason | 24h |
| 26 | 3.1.4 | Complete MAGE-TAB translation |  | 3d | 2007-07-31 | 2007-08-02 | 7d | rsrinvasa | 24h |
| 27 | 3.2 | UI Framework (revise existing implementation) | milestone | 0d | 2007-07-31 | 2007-07-31 | 10d | tparnell |  |

Notes:
- 19: csm meeting needed / no csm integration / potential dependency on login and authentication

| ID | WBS | Task | Duration | Start | Finish | Total slack | Resources | Work |
| --- | --- | --- | --- | --- | --- | --- | --- | --- |
| 28 | 3.3 | **Subsystem Implementation** | 10d? | 2007-07-31 | 2007-08-13 | 0d |  | 248h |
| 29 | 3.3.1 | FileAccessService | 5d | 2007-07-31 | 2007-08-06 | 5d | jpike | 40h |
| 30 | 3.3.2 | MageTabParser: Validation | 5d | 2007-07-31 | 2007-08-06 | 5d | bmason | 40h |
| 31 | 3.3.3 | ArrayDataService: Validation | 3d | 2007-07-31 | 2007-08-02 | 7d | bmason | 24h |
| 32 | 3.3.4 | ArrayDesignService: Validation | 2d | 2007-07-31 | 2007-08-01 | 8d | bmason | 16h |
| 33 | 3.3.5 | Remote API Grid Implementation | 10d | 2007-07-31 | 2007-08-13 | 0d | tparnell | 80h |
| 34 | 3.3.6 | PermissionsManagement | 5d | 2007-07-31 | 2007-08-06 | 5d | tparnell | 40h |
| 35 | 3.3.7 | Object Access Authorization Mechanism | 1d? | 2007-07-31 | 2007-07-31 | 9d | tparnell | 8h |
| 36 | 3.4 | Implement Use Cases | 1d? | 2007-07-31 | 2007-07-31 | 9d |  |  |
| 37 | 3.5 | **Implement Additional Array Design Parsers** | 3d | 2007-07-31 | 2007-08-02 | 7d |  | 40h |
| 38 | 3.5.1 | Illumina | 3d | 2007-07-31 | 2007-08-02 | 7d | jpike | 24h |
| 39 | 3.5.2 | Affymetrix SNP | 2d | 2007-07-31 | 2007-08-01 | 8d | bmason | 16h |
| 40 | 3.6 | **Implement Additional Array Data Parsers** | 4d | 2007-07-31 | 2007-08-03 | 6d |  | 64h |
| 41 | 3.6.1 | Illumina | 4d | 2007-07-31 | 2007-08-03 | 6d | bmason | 32h |
| 42 | 3.6.2 | Affymetrix SNP | 2d | 2007-07-31 | 2007-08-01 | 8d | jpike | 16h |
| 43 | 3.6.3 | Affymetrix CHP | 2d | 2007-07-31 | 2007-08-01 | 8d | jpike | 16h |
| 44 | 4 | **Test** | 1d? | 2007-07-31 | 2007-07-31 | 9d |  |  |
| 45 | 4.1 | Test Plan | 1d? | 2007-07-31 | 2007-07-31 | 9d |  |  |
| 46 | 4.2 | Validate Test Cases | 1d? | 2007-07-31 | 2007-07-31 | 9d |  |  |
| 47 | 4.3 | Manage Permission Test Cases | 1d? | 2007-07-31 | 2007-07-31 | 9d |  |  |
| 48 | 4.4 | Import Data Files Test Suite | 1d? | 2007-07-31 | 2007-07-31 | 9d |  |  |
| 49 | 4.5 | Remote Java API Test Suite | 1d? | 2007-07-31 | 2007-07-31 | 9d |  |  |
| 50 | 5 | Project Management | 1d? | 2007-07-31 | 2007-07-31 | 9d |  |  |
| 51 | 6 | Change and Configuration Management | 1d? | 2007-07-31 | 2007-07-31 | 9d |  |  |

Notes:
- 36: The bulk of the implementation work is in the Subsystems -- this is the front end code to tie functionality together

| ID | WBS | Task | Duration | Start | Finish | Total slack |
| --- | --- | --- | --- | --- | --- | --- |
| 52 | 7 | **Environment** | 1d? | 2007-07-31 | 2007-07-31 | 9d |
| 53 | 7.1 | Development Process "Quick Start" | 1d? | 2007-07-31 | 2007-07-31 | 9d |
| 54 | 7.2 | Incorporate Automated Deployment Process | 1d? | 2007-07-31 | 2007-07-31 | 9d |
