# caarray1.6RO_schedule

Schedule from MS Project, 2007-11-28 to 2008-01-25, A marks actual dates.

## Calendars

- Standard: Mon-Fri 08:00-12:00, 13:00-17:00; Sat-Sun off.

## Resources

| Resource |
| --- |
| rtamrakar |
| mduncan |
| Systems |
| klemmj |
| smatyas |

## Schedule

| ID | WBS | Task | Type | Duration | Start | Finish | Predecessors | Complete | Constraint | Resources | Work | Actual work |
| --- | --- | --- | --- | --- | --- | --- | --- | --- | --- | --- | --- | --- |
| 1 | 1 | **caArray 1.6_readonly Activities** |  | 42d? | 2007-11-28 A | 2008-01-25 A |  | 100% |  |  | 144h | 144h |
| 2 | 1.1 | Prepare caArray 1.6_RO design document |  | 1d? | 2007-12-12 A | 2007-12-12 A |  | 100% | start no earlier than 2007-12-12 | rtamrakar | 8h | 8h |
| 3 | 1.2 | Submit caArray 1.6_RO change request |  | 1d | 2007-12-14 A | 2007-12-14 A | 2 | 100% | start no earlier than 2007-12-14 | mduncan | 8h | 8h |
| 4 | 1.3 | caArray 1.6_RO CCB |  | 1d? | 2007-12-18 A | 2007-12-18 A | 3 | 100% | start no earlier than 2007-12-18 | klemmj; smatyas | 16h | 16h |
| 5 | 1.4 | caArray 1.6_RO Update from CCB |  | 2.4d | 2007-12-19 A | 2007-12-21 A | 4 | 100% |  | rtamrakar; smatyas [25%] | 24h | 24h |
| 6 | 1.5 | Milestone: caArray 1.6_RO CCB Approval | milestone | 0d | 2007-12-19 A | 2007-12-19 A |  | 100% | start no earlier than 2007-12-19 |  |  |  |
| 7 | 1.6 | Develop caArray 1.6_RO |  | 7d? | 2007-11-28 A | 2007-12-06 A |  | 100% | finish no earlier than 2007-12-06 | rtamrakar | 56h | 56h |
| 8 | 1.7 | Test caArray 1.6_RO |  | 4d? | 2007-12-10 A | 2007-12-13 A | 7 | 100% | finish no earlier than 2007-12-13 | rtamrakar | 32h | 32h |
| 9 | 1.8 | Milestone: caArray 1.6_RO release to QA | milestone | 0d | 2007-12-18 A | 2007-12-18 A | 7, 8 | 100% | start no earlier than 2007-12-18 | Systems |  |  |
| 10 | 1.9 | QA Testing of caArray 1.6_RO |  | 20d? | 2007-12-19 A | 2008-01-15 A | 9 | 100% | start no earlier than 2007-12-19 |  |  |  |
| 11 | 1.10 | Milestone: caArray 1.6_RO QA Approval | milestone | 0d | 2008-01-15 A | 2008-01-15 A | 10 | 100% |  |  |  |  |
| 12 | 1.11 | Milestone: caArray 1.6_RO release to Staging | milestone | 0d | 2008-01-18 A | 2008-01-18 A |  | 100% | start no earlier than 2008-01-18 | Systems |  |  |
| 13 | 1.12 | Milestone: caArray 1.6_RO release to Production | milestone | 0d | 2008-01-25 A | 2008-01-25 A |  | 100% | start no earlier than 2008-01-25 | Systems |  |  |
