# caarray_2_2_1

Schedule from MS Project, 2008-10-13 to 2009-06-30, A marks actual dates.
Sony Electronics, Inc.

## Calendars

- Standard: Mon-Fri 08:00-12:00, 13:00-17:00; Sat-Sun off.

## Resources

| Resource |
| --- |
| mshestopalov |
| misquitt |
| reddya2 |
| khannave |
| qabox |
| stagebox |
| liujj |

## Schedule

| ID | WBS | Task | Type | Duration | Start | Finish | Predecessors | Complete | Remaining | Total slack | Constraint | Resources | Work | Actual work |
| --- | --- | --- | --- | --- | --- | --- | --- | --- | --- | --- | --- | --- | --- | --- |
| 1 | 1 | **caArray 2.2.1** |  | 187d? | 2008-10-13 A | 2009-06-30 |  | 48% | 96.7d? | 0d |  |  | 544h | 448h |
| 2 | 1.1 | **Construction Beta** |  | 13d | 2009-02-16 A | 2009-03-04 A |  | 100% |  |  |  |  | 80h | 80h |
| 3 | 1.1.1 | **Implementation** |  | 5d | 2009-02-19 A | 2009-02-25 A |  | 100% |  |  |  |  | 40h | 40h |
| 4 | 1.1.1.1 | Implement Beta items |  | 4d | 2009-02-19 A | 2009-02-24 A |  | 100% |  |  | finish no earlier than 2009-02-24 | mshestopalov | 32h | 32h |
| 5 | 1.1.1.2 | Verify Beta items on DEV tier |  | 1d | 2009-02-25 A | 2009-02-25 A | 4 | 100% |  |  |  | mshestopalov | 8h | 8h |
| 6 | 1.1.1.3 | Milestone: Deploy Beta to QA-VM | milestone | 0d | 2009-02-25 A | 2009-02-25 A | 5 | 100% |  |  |  |  |  |  |
| 7 | 1.1.2 | **IQA Testing** |  | 13d | 2009-02-16 A | 2009-03-04 A |  | 100% |  |  |  |  | 40h | 40h |
| 8 | 1.1.2.1 | UAT new items on QA |  | 5d | 2009-02-26 A | 2009-03-04 A | 6 | 100% |  |  |  | liujj | 40h | 40h |
| 9 | 1.1.2.2 | Milestone: Complete Beta Testing | milestone | 0d | 2009-02-16 A | 2009-02-16 A |  | 100% |  |  |  |  |  |  |
| 10 | 1.1.3 | Milestone: Complete Beta Construction | milestone | 0d | 2009-02-25 A | 2009-02-25 A | 6, 9 | 100% |  |  |  |  |  |  |
| 11 | 1.2 | **Construction RC1** |  | 37d? | 2009-03-02 A | 2009-04-21 A |  | 100% |  |  |  |  | 192h | 192h |
| 12 | 1.2.1 | **Implementation** |  | 24d? | 2009-03-02 A | 2009-04-02 A | 6 | 100% |  |  |  |  |  |  |
| 13 | 1.2.1.1 | Implement RC1 items |  | 23d? | 2009-03-02 A | 2009-04-01 A | 6 | 100% |  |  | finish no earlier than 2009-04-01 |  |  |  |
| 14 | 1.2.1.2 | Verify RC1 items on DEV tier |  | 1d | 2009-04-02 A | 2009-04-02 A | 13 | 100% |  |  |  |  |  |  |
| 15 | 1.2.1.3 | Milestone: Deploy RC1 to QA | milestone | 0d | 2009-04-02 A | 2009-04-02 A | 14 | 100% |  |  |  |  |  |  |
| 16 | 1.2.2 | **IQA Testing** |  | 13d | 2009-04-03 A | 2009-04-21 A | 15 | 100% |  |  |  |  | 192h | 192h |
| 17 | 1.2.2.1 | 221RC1: Verify new items on QA |  | 5d | 2009-04-03 A | 2009-04-09 A | 15 | 100% |  |  |  | misquitt | 40h | 40h |
| 18 | 1.2.2.2 | 221RC1: Regression test on QA |  | 3d | 2009-04-03 A | 2009-04-07 A | 15 | 100% |  |  |  | khannave | 24h | 24h |
| 19 | 1.2.2.3 | Deployment test on QA-VM |  | 2d | 2009-04-03 A | 2009-04-06 A | 15 | 100% |  |  |  |  |  |  |
| 20 | 1.2.2.4 | Installer test |  | 3d | 2009-04-03 A | 2009-04-07 A | 15 | 100% |  |  |  | reddya2 | 24h | 24h |
| 21 | 1.2.2.5 | App scan on QA |  | 3d | 2009-04-10 A | 2009-04-14 A | 17, 18 | 100% |  |  |  | qabox | 24h | 24h |
| 22 | 1.2.2.6 | Deploy RC1 to STAGE |  | 2d | 2009-04-10 A | 2009-04-13 A | 17, 18 | 100% |  |  |  | stagebox | 16h | 16h |
| 23 | 1.2.2.7 | 221RC1: Verify new items on STAGE |  | 2d | 2009-04-14 A | 2009-04-15 A | 22 | 100% |  |  |  | misquitt | 16h | 16h |
| 24 | 1.2.2.8 | 221RC1: Regression test on STAGE |  | 3d | 2009-04-14 A | 2009-04-16 A | 22 | 100% |  |  |  | khannave | 24h | 24h |
| 25 | 1.2.2.9 | App scan on STAGE |  | 3d | 2009-04-17 A | 2009-04-21 A | 21, 23, 24 | 100% |  |  |  | stagebox | 24h | 24h |
| 26 | 1.2.2.10 | Milestone: Complete RC2 Testing | milestone | 0d | 2009-04-21 A | 2009-04-21 A | 25 | 100% |  |  |  |  |  |  |
| 27 | 1.2.3 | Milestone: Complete RC1 Construction | milestone | 0d | 2009-04-21 A | 2009-04-21 A | 15, 16 | 100% |  |  |  |  |  |  |

| ID | WBS | Task | Type | Duration | Start | Finish | Predecessors | Complete | Remaining | Total slack | Free slack | Constraint | Resources | Work | Actual work |
| --- | --- | --- | --- | --- | --- | --- | --- | --- | --- | --- | --- | --- | --- | --- | --- |
| 28 | 1.3 | **Construction RC2** |  | 10d | 2009-04-15 A | 2009-04-28 A |  | 100% |  |  |  |  |  | 96h | 96h |
| 29 | 1.3.1 | **Implementation** |  | 4d | 2009-04-15 A | 2009-04-20 A |  | 100% |  |  |  |  |  |  |  |
| 30 | 1.3.1.1 | Implement RC2 items |  | 3d | 2009-04-15 A | 2009-04-17 A | 17, 18, 20, 21 | 100% |  |  |  |  |  |  |  |
| 31 | 1.3.1.2 | Verify RC2 items on DEV tier |  | 1d | 2009-04-20 A | 2009-04-20 A | 30 | 100% |  |  |  |  |  |  |  |
| 32 | 1.3.1.3 | Milestone: Deploy R2 to QA | milestone | 0d | 2009-04-20 A | 2009-04-20 A | 31 | 100% |  |  |  |  |  |  |  |
| 33 | 1.3.2 | **IQA Testing** |  | 6d | 2009-04-20 A | 2009-04-28 A | 32 | 100% |  |  |  |  |  | 96h | 96h |
| 34 | 1.3.2.1 | 221RC2: Verify defects on QA |  | 3d | 2009-04-21 A | 2009-04-23 A | 32 | 100% |  |  |  |  | misquitt | 24h | 24h |
| 35 | 1.3.2.2 | 221RC2: Regression test on QA |  | 3d | 2009-04-21 A | 2009-04-23 A | 32 | 100% |  |  |  |  | khannave | 24h | 24h |
| 36 | 1.3.2.3 | Deployment test on QA-VM |  | 2d | 2009-04-21 A | 2009-04-22 A | 32 | 100% |  |  |  |  |  |  |  |
| 37 | 1.3.2.4 | Installer test |  | 3d | 2009-04-21 A | 2009-04-23 A | 32 | 100% |  |  |  |  | reddya2 | 24h | 24h |
| 38 | 1.3.2.5 | App scan on QA |  | 3d | 2009-04-24 A | 2009-04-28 A | 34, 35 | 100% |  |  |  |  | qabox | 24h | 24h |
| 39 | 1.3.2.6 | Milestone: Complete RC2 Testing | milestone | 0d | 2009-04-20 A | 2009-04-20 A |  | 100% |  |  |  |  |  |  |  |
| 40 | 1.3.3 | Milestone: Complete RC2 Construction | milestone | 0d | 2009-04-20 A | 2009-04-20 A | 39 | 100% |  |  |  |  |  |  |  |
| 41 | 1.4 | **Construction RC3** |  | 16d | 2009-04-24 A | 2009-05-15 |  | 50% | 8d | 32d |  |  |  | 176h | 80h |
| 42 | 1.4.1 | **Implementation** |  | 4d | 2009-04-24 A | 2009-04-29 A |  | 100% |  |  |  |  |  |  |  |
| 43 | 1.4.1.1 | Implement RC3 items |  | 3d | 2009-04-24 A | 2009-04-28 A | 34, 35 | 100% |  |  |  |  |  |  |  |
| 44 | 1.4.1.2 | Verify RC3 items on DEV tier |  | 1d | 2009-04-29 A | 2009-04-29 A | 43 | 100% |  |  |  |  |  |  |  |
| 45 | 1.4.1.3 | Milestone: Deploy R3 to QA | milestone | 0d | 2009-04-29 A | 2009-04-29 A | 44 | 100% |  |  |  |  |  |  |  |
| 46 | 1.4.2 | **IQA Testing** |  | 12d | 2009-04-30 A | 2009-05-15 | 45 | 42% | 7d | 32d |  |  |  | 176h | 80h |
| 47 | 1.4.2.1 | 221RC3: Verify defects on QA |  | 2d | 2009-04-30 A | 2009-05-01 A | 45 | 100% |  |  |  |  | misquitt | 16h | 16h |
| 48 | 1.4.2.2 | 221RC3: Regression test on QA |  | 4d | 2009-04-30 A | 2009-05-05 | 45 | 75% | 1d | 29d | 0d | finish no earlier than 2009-05-05 | khannave | 32h | 24h |
| 49 | 1.4.2.3 | Deployment test on QA-VM |  | 2d | 2009-04-30 | 2009-05-01 | 45 |  |  | 42d |  |  |  |  |  |
| 50 | 1.4.2.4 | Installer test |  | 5d | 2009-04-30 A | 2009-05-06 A | 45 | 100% |  |  |  |  | reddya2 | 40h | 40h |
| 51 | 1.4.2.5 | Deploy RC3 to Stage |  | 2d | 2009-05-06 | 2009-05-07 | 47, 48 |  |  | 29d | 0d |  | stagebox | 16h |  |
| 52 | 1.4.2.6 | 221RC3: Verify defects on STAGE |  | 3d | 2009-05-08 | 2009-05-12 | 51 |  |  | 29d | 0d |  | misquitt | 24h |  |
| 53 | 1.4.2.7 | 221RC3: Regression test on STAGE |  | 3d | 2009-05-08 | 2009-05-12 | 51 |  |  | 29d | 0d |  | khannave | 24h |  |
| 54 | 1.4.2.8 | App scan on STAGE |  | 3d | 2009-05-13 | 2009-05-15 | 52, 53 |  |  | 29d | 0d |  | stagebox | 24h |  |
| 55 | 1.4.2.9 | Milestone: Complete RC3 Testing | milestone | 0d | 2009-05-15 | 2009-05-15 | 54 |  |  | 29d | 0d |  |  |  |  |
| 56 | 1.4.3 | Milestone: Complete RC3 Construction | milestone | 0d | 2009-05-15 | 2009-05-15 | 55 |  |  | 29d | 0d |  |  |  |  |

| ID | WBS | Task | Type | Duration | Start | Finish | Predecessors | Complete | Remaining | Total slack | Free slack |
| --- | --- | --- | --- | --- | --- | --- | --- | --- | --- | --- | --- |
| 57 | 1.5 | **Transition** |  | 187d | 2008-10-13 A | 2009-06-30 |  | 30% | 131.56d | 0d |  |
| 58 | 1.5.1 | **CBIIT Deployment** |  | 3d | 2009-05-18 | 2009-05-20 |  |  |  | 29d |  |
| 59 | 1.5.1.1 | Deploy to PROD |  | 2d | 2009-05-18 | 2009-05-19 | 56 |  |  | 29d | 0d |
| 60 | 1.5.1.2 | Verify PROD deployment |  | 1d | 2009-05-20 | 2009-05-20 | 59 |  |  | 29d | 0d |
| 61 | 1.5.1.3 | Milestone: Complete PROD deployment | milestone | 0d | 2009-05-20 | 2009-05-20 | 60 |  |  | 29d | 0d |
| 62 | 1.5.2 | **All Release Artifacts** |  | 41d | 2009-03-05 | 2009-04-30 |  |  |  | 43d | 13d |
| 63 | 1.5.2.1 | **User's Guide** |  | 11d | 2009-03-05 | 2009-03-19 |  |  |  | 69d |  |
| 64 | 1.5.2.1.1 | Send changes to Jill |  | 1d | 2009-03-05 | 2009-03-05 | 8 |  |  | 69d | 0d |
| 65 | 1.5.2.1.2 | Update User's Guide |  | 5d | 2009-03-06 | 2009-03-12 | 64 |  |  | 69d | 0d |
| 66 | 1.5.2.1.3 | Revise User's Guide after review |  | 5d | 2009-03-13 | 2009-03-19 | 65 |  |  | 69d | 0d |
| 67 | 1.5.2.1.4 | Milestone: Complete User's Guide | milestone | 0d | 2009-03-19 | 2009-03-19 | 66 |  |  | 69d | 26d |
| 68 | 1.5.2.2 | **Installation Guide** |  | 7d | 2009-04-08 | 2009-04-16 |  |  |  | 49d |  |
| 69 | 1.5.2.2.1 | Send changes to Jill |  | 1d | 2009-04-08 | 2009-04-08 | 20 |  |  | 49d | 0d |
| 70 | 1.5.2.2.2 | Update Installation Guide |  | 3d | 2009-04-09 | 2009-04-13 | 69 |  |  | 49d | 0d |
| 71 | 1.5.2.2.3 | Revise Installation Guide after review |  | 3d | 2009-04-14 | 2009-04-16 | 70 |  |  | 49d | 0d |
| 72 | 1.5.2.2.4 | Milestone: Complete Installation Guide | milestone | 0d | 2009-04-16 | 2009-04-16 | 71 |  |  | 49d | 6d |
| 73 | 1.5.2.3 | **Other Release Artifacts** |  | 4d | 2009-04-21 | 2009-04-24 |  |  |  | 43d |  |
| 74 | 1.5.2.3.1 | Prepare Release Notes |  | 1d | 2009-04-24 | 2009-04-24 | 34 |  |  | 43d | 0d |
| 75 | 1.5.2.3.2 | Prepare Client Libraries and javadoc |  | 1d | 2009-04-21 | 2009-04-21 | 40 |  |  | 46d | 3d |
| 76 | 1.5.2.3.3 | Prepare installer packages |  | 1d | 2009-04-21 | 2009-04-21 | 40 |  |  | 46d | 3d |
| 77 | 1.5.2.3.4 | Milestone: Complete other release artifacts | milestone | 0d | 2009-04-24 | 2009-04-24 | 74, 75, 76 |  |  | 43d | 0d |
| 78 | 1.5.2.4 | **Update sites and Announce release** |  | 4d | 2009-04-27 | 2009-04-30 | 67, 72, 77 |  |  | 43d |  |
| 79 | 1.5.2.4.1 | Update caArray Gforge site |  | 1d | 2009-04-27 | 2009-04-27 |  |  |  | 46d |  |
| 80 | 1.5.2.4.2 | Update Download Centre page |  | 4d | 2009-04-27 | 2009-04-30 |  |  |  | 43d |  |
| 81 | 1.5.2.4.3 | Update Tools page |  | 1d | 2009-04-27 | 2009-04-27 |  |  |  | 46d |  |
| 82 | 1.5.2.4.4 | Update Landing site |  | 1d | 2009-04-27 | 2009-04-27 |  |  |  | 46d |  |
| 83 | 1.5.2.4.5 | Update LSD Gforge site |  | 1d | 2009-04-27 | 2009-04-27 |  |  |  | 46d |  |
| 84 | 1.5.3 | caArray 2.20 Closeout | milestone | 0d | 2009-05-20 | 2009-05-20 | 62, 61 |  |  | 29d |  |
| 85 | 1.5.4 | caarray_schedule_2_3_0 |  | 187d | 2008-10-13 A | 2009-06-30 |  | 35% | 122.07d | 0d |  |
