# caarray_schedule_2_1_0

Schedule from MS Project, 2008-05-27 to 2008-08-07, A marks actual dates.
Sony Electronics, Inc.

## Calendars

- Standard: Mon-Fri 08:00-12:00, 13:00-17:00; Sat-Sun off.

## Resources

| Resource |
| --- |
| slustbader |
| mshe |
| mshestopalov |
| wcheng |
| etavela |
| dkokotov |
| keener |
| jgills |
| reddya |
| bmason |
| rsrinivasa |
| misquitt |
| jhadfield |
| hadfieldj |
| klemmj |

## Schedule

| ID | WBS | Task | Duration | Start | Finish | Predecessors | Complete | Constraint | Resources | Work | Actual work |
| --- | --- | --- | --- | --- | --- | --- | --- | --- | --- | --- | --- |
| 1 | 1 | **Construction alpha3** | 20d? | 2008-05-27 A | 2008-06-23 A |  | 100% |  |  | 528h | 528h |
| 2 | 1.1 | Project Management | 1d? | 2008-05-27 A | 2008-05-27 A |  | 100% |  |  |  |  |
| 3 | 1.2 | Requirements Management | 1d? | 2008-05-27 A | 2008-05-27 A |  | 100% |  |  |  |  |
| 4 | 1.3 | Implementation | 8.25d | 2008-05-29 A | 2008-06-10 A |  | 100% | finish no earlier than 2008-06-10 | slustbader; mshestopalov; jgills; dkokotov | 264h | 264h |
| 5 | 1.4 | **Test** | 9d | 2008-06-11 A | 2008-06-23 A | 4 | 100% |  |  | 264h | 264h |
| 6 | 1.4.1 | Test on DEV | 1d | 2008-06-11 A | 2008-06-11 A |  | 100% |  | slustbader; mshestopalov; jgills; dkokotov; bmason; rsrinivasa | 48h | 48h |
| 7 | 1.4.2 | Verify Defects | 5d | 2008-06-12 A | 2008-06-18 A | 6 | 100% | start no earlier than 2008-06-12 | keener; bmason; rsrinivasa | 120h | 120h |
| 8 | 1.4.3 | Regression Test | 2d | 2008-06-12 A | 2008-06-13 A | 6 | 100% | start no earlier than 2008-06-12 | reddya | 16h | 16h |
| 9 | 1.4.4 | Deploy to Stage | 1d | 2008-06-19 A | 2008-06-19 A | 7, 8 | 100% | start no earlier than 2008-06-16 |  |  |  |
| 10 | 1.4.5 | Stage Test | 2d | 2008-06-20 A | 2008-06-23 A | 9 | 100% | start no earlier than 2008-06-20 | keener; bmason; rsrinivasa; misquitt; reddya | 80h | 80h |
| 11 | 2 | **Construction alpha4 (model lock down)** | 31d? | 2008-05-27 A | 2008-07-08 A |  | 100% |  |  | 624h | 624h |
| 12 | 2.1 | Project Management | 1d? | 2008-05-27 A | 2008-05-27 A |  | 100% |  |  |  |  |
| 13 | 2.2 | Requirements Management | 2d | 2008-05-27 A | 2008-05-28 A |  | 100% |  |  |  |  |
| 14 | 2.3 | Implementation | 10d | 2008-06-11 A | 2008-06-24 A | 4 | 100% |  | slustbader; mshestopalov; jgills; dkokotov | 320h | 320h |
| 15 | 2.4 | **Test** | 10d? | 2008-06-25 A | 2008-07-08 A | 14 | 100% |  |  | 304h | 304h |
| 16 | 2.4.1 | Test on DEV | 1d? | 2008-06-25 A | 2008-06-25 A |  | 100% |  | slustbader; mshestopalov; jgills; dkokotov; bmason; rsrinivasa | 48h | 48h |
| 17 | 2.4.2 | Verify Defects | 4d | 2008-06-26 A | 2008-07-01 A | 16 | 100% | finish no earlier than 2008-07-01 | keener; bmason; rsrinivasa; misquitt; reddya | 160h | 160h |
| 18 | 2.4.3 | Regression Test | 2d | 2008-06-25 A | 2008-06-26 A |  | 100% |  | reddya | 16h | 16h |
| 19 | 2.4.4 | Deploy to Stage | 1d | 2008-07-02 A | 2008-07-02 A | 17 | 100% |  |  |  |  |
| 20 | 2.4.5 | Stage Test | 2d | 2008-07-03 A | 2008-07-04 A | 19 | 100% |  | keener; bmason; rsrinivasa; misquitt; reddya | 80h | 80h |
| 21 | 2.4.6 | Prod Deployment Test | 4d | 2008-07-03 A | 2008-07-08 A | 19 | 100% |  |  |  |  |
| 22 | 3 | **Construction RC (feature lock down)** | 48d? | 2008-05-27 A | 2008-07-31 A |  | 100% |  |  |  |  |
| 23 | 3.1 | Project Management | 1d? | 2008-05-27 A | 2008-05-27 A |  | 100% |  |  |  |  |
| 24 | 3.2 | Requirements Management | 1d? | 2008-05-27 A | 2008-05-27 A |  | 100% |  |  |  |  |

| ID | WBS | Task | Duration | Start | Finish | Predecessors | Complete | Constraint | Resources | Work | Actual work |
| --- | --- | --- | --- | --- | --- | --- | --- | --- | --- | --- | --- |
| 25 | 3.3 | **Design** | 27d | 2008-06-25 A | 2008-07-31 A |  | 100% |  |  |  |  |
| 26 | 3.3.1 | Final update to the model | 2d | 2008-06-25 A | 2008-06-26 A | 14 | 100% |  |  |  |  |
| 27 | 3.3.2 | Register model on caDSR | 25d | 2008-06-27 A | 2008-07-31 A | 26 | 100% |  |  |  |  |
| 28 | 3.4 | Implementation | 11d? | 2008-06-25 A | 2008-07-09 A | 14 | 100% | finish no earlier than 2008-07-09 |  |  |  |
| 29 | 3.5 | **Test** | 11d | 2008-07-10 A | 2008-07-24 A | 28 | 100% |  |  |  |  |
| 30 | 3.5.1 | Test on DEV | 1d | 2008-07-10 A | 2008-07-10 A |  | 100% |  |  |  |  |
| 31 | 3.5.2 | Verify Defects | 2d | 2008-07-18 A | 2008-07-21 A | 30 | 100% | finish no earlier than 2008-07-21 |  |  |  |
| 32 | 3.5.3 | Regression Test | 2d | 2008-07-11 A | 2008-07-14 A | 30 | 100% | start no earlier than 2008-07-07 |  |  |  |
| 33 | 3.5.4 | Installer Test | 2d | 2008-07-22 A | 2008-07-23 A | 31, 32 | 100% |  |  |  |  |
| 34 | 3.5.5 | Deploy to Stage | 1d | 2008-07-22 A | 2008-07-22 A | 31, 32 | 100% |  |  |  |  |
| 35 | 3.5.6 | Stage Test | 2d | 2008-07-23 A | 2008-07-24 A | 34 | 100% |  |  |  |  |
| 36 | 4 | **Construction RC2** | 24d? | 2008-06-25 A | 2008-07-28 A | 14 | 100% |  |  | 376h | 376h |
| 37 | 4.1 | Project Management | 1d? | 2008-06-25 A | 2008-06-25 A |  | 100% |  |  |  |  |
| 38 | 4.2 | Requirements Management | 2d | 2008-06-25 A | 2008-06-26 A |  | 100% |  |  |  |  |
| 39 | 4.3 | **Design** | 4d | 2008-07-22 A | 2008-07-25 A |  | 100% |  |  | 32h | 32h |
| 40 | 4.3.1 | Update SAD | 4d | 2008-07-22 A | 2008-07-25 A | 28 | 100% | finish no earlier than 2008-07-25 | dkokotov | 32h | 32h |
| 41 | 4.4 | Implementation | 5d | 2008-07-15 A | 2008-07-21 A | 28 | 100% | finish no earlier than 2008-07-21 | slustbader; mshestopalov; jgills; dkokotov | 160h | 160h |
| 42 | 4.5 | **Test** | 5d | 2008-07-22 A | 2008-07-28 A | 41 | 100% |  |  | 184h | 184h |
| 43 | 4.5.1 | Verify Defects | 2d | 2008-07-22 A | 2008-07-23 A |  | 100% | start no earlier than 2008-07-22 | keener; bmason; rsrinivasa; misquitt; reddya | 80h | 80h |
| 44 | 4.5.2 | Regression Test | 2d | 2008-07-22 A | 2008-07-23 A |  | 100% | start no earlier than 2008-07-22 | reddya | 16h | 16h |
| 45 | 4.5.3 | Deploy to Stage | 1d | 2008-07-24 A | 2008-07-24 A | 43, 44 | 100% |  |  |  |  |
| 46 | 4.5.4 | Stage Test | 2d | 2008-07-25 A | 2008-07-28 A | 45 | 100% |  | bmason; rsrinivasa; misquitt; reddya | 64h | 64h |
| 47 | 4.5.5 | Installer Test | 3d | 2008-07-24 A | 2008-07-28 A | 43, 44 | 100% |  | keener | 24h | 24h |
| 48 | 5 | Construction RC3 - Address Blocking Issues | 2d? | 2008-07-28 A | 2008-07-29 A |  | 100% | finish no earlier than 2008-07-29 |  |  |  |
| 49 | 6 | Construction RC4 - DB Migration Script Improvement | 5d? | 2008-07-28 A | 2008-08-01 A |  | 100% | finish no earlier than 2008-08-01 |  |  |  |

| ID | WBS | Task | Duration | Start | Finish | Predecessors | Complete | Constraint | Resources | Work | Actual work |
| --- | --- | --- | --- | --- | --- | --- | --- | --- | --- | --- | --- |
| 50 | 7 | **Construction RC5 - Import / Delete of Large Data Sets** | 7d? | 2008-07-29 A | 2008-08-06 A |  | 100% |  |  |  |  |
| 51 | 7.1 | Implementation | 5d? | 2008-07-29 A | 2008-08-04 A |  | 100% | finish no earlier than 2008-08-04 |  |  |  |
| 52 | 7.2 | **Test** | 2d? | 2008-08-05 A | 2008-08-06 A | 51 | 100% |  |  |  |  |
| 53 | 7.2.1 | Verify Defects | 1d? | 2008-08-05 A | 2008-08-05 A | 51 | 100% |  |  |  |  |
| 54 | 7.2.2 | Regression Test | 2d | 2008-08-05 A | 2008-08-06 A | 51 | 100% |  |  |  |  |
| 55 | 7.2.3 | Deploy to Stage | 1d? | 2008-08-05 A | 2008-08-05 A | 51 | 100% |  |  |  |  |
| 56 | 7.2.4 | Installer Test | 2d | 2008-08-05 A | 2008-08-06 A | 51 | 100% |  |  |  |  |
| 57 | 8 | **Configuration and Change Management** | 53d | 2008-05-27 A | 2008-08-07 A |  | 100% |  |  | 160h | 160h |
| 58 | 8.1 | Prepare Release Note | 1d | 2008-05-27 A | 2008-05-27 A |  | 100% |  |  |  |  |
| 59 | 8.2 | **Documentation** | 51d | 2008-05-27 A | 2008-08-05 A |  | 100% |  |  | 160h | 160h |
| 60 | 8.2.1 | Draft Update User Guide | 4d | 2008-07-22 A | 2008-07-25 A | 41 | 100% |  | hadfieldj | 32h | 32h |
| 61 | 8.2.2 | Review User Guide | 4d | 2008-07-28 A | 2008-07-31 A | 60 | 100% |  | klemmj; rsrinivasa | 64h | 64h |
| 62 | 8.2.3 | Complete User Guide | 3d | 2008-08-01 A | 2008-08-05 A | 61 | 100% |  | hadfieldj | 24h | 24h |
| 63 | 8.2.4 | Update Technical Guide | 3d | 2008-07-28 A | 2008-07-30 A | 14, 40 | 100% |  | hadfieldj | 24h | 24h |
| 64 | 8.2.5 | Update Online Help | 2d | 2008-07-07 A | 2008-07-08 A | 20 | 100% |  | hadfieldj | 16h | 16h |
| 65 | 8.2.6 | Update Installation Guide | 5d | 2008-05-27 A | 2008-06-02 A |  | 100% |  |  |  |  |
| 66 | 8.3 | Update gForge | 1d | 2008-08-07 A | 2008-08-07 A | 60, 61, 62, 63, 65, 56, 53, 54, 55 | 100% |  |  |  |  |
| 67 | 8.4 | Update Download Center | 4d | 2008-07-29 A | 2008-08-01 A | 46 | 100% |  |  |  |  |
| 68 | 8.5 | Update Tools/Landing Site | 2d | 2008-07-29 A | 2008-07-30 A | 46 | 100% |  |  |  |  |
| 69 | 9 | **Environment** | 1d | 2008-08-07 A | 2008-08-07 A | 47 | 100% |  |  |  |  |
| 70 | 9.1 | Deploy to Prod | 1d | 2008-08-07 A | 2008-08-07 A | 57FF | 100% |  |  |  |  |
