# caArray2.0-DeploymentActivities

Schedule from MS Project, 2007-11-14 to 2008-01-25, A marks actual dates.
Sony Electronics, Inc.

## Calendars

- Standard: Mon-Fri 08:00-12:00, 13:00-17:00; Sat-Sun off.

## Resources

| Resource |
| --- |
| juli |
| jill |
| mduncan |
| jhatfield |
| klemmj |
| hatfieldj |
| bgendleman |

## Schedule

| ID | WBS | Task | Type | Duration | Start | Finish | Predecessors | Complete | Remaining | Total slack | Free slack | Constraint | Resources | Work | Actual work |
| --- | --- | --- | --- | --- | --- | --- | --- | --- | --- | --- | --- | --- | --- | --- | --- |
| 1 | 1 | **Configuration and Change Management** |  | 53d? | 2007-11-14 A | 2008-01-25 |  | 99% | 0d? | 0d |  |  |  | 1104h | 1096h |
| 2 | 1.1 | **Documentation** |  | 26d? | 2007-11-16 A | 2007-12-21 A |  | 100% |  |  |  |  |  | 464h | 464h |
| 3 | 1.1.1 | End User Guide |  | 21d? | 2007-11-16 A | 2007-12-14 A |  | 100% |  |  |  | finish no earlier than 2007-12-14 | hatfieldj | 168h | 168h |
| 4 | 1.1.2 | Online Help |  | 17d? | 2007-11-16 A | 2007-12-10 A |  | 100% |  |  |  | finish no earlier than 2007-12-10 | hatfieldj | 136h | 136h |
| 5 | 1.5.1.6.3.1 | Technical Guide |  | 1d? | 2007-12-03 | 2007-12-03 |  |  |  | -91d | 0d |  |  |  |  |
| 6 | 1.1.4 | Tech Guide |  | 10d? | 2007-12-10 A | 2007-12-21 A | 5 | 100% |  |  |  | finish no earlier than 2007-12-14 | hatfieldj | 80h | 80h |
| 7 | 1.5.1.6.3.3 | Installation Guide |  | 1d? | 2007-12-03 | 2007-12-03 |  |  |  | -91d | 0d |  |  |  |  |
| 8 | 1.1.6 | Installation Guide |  | 10d? | 2007-12-04 A | 2007-12-17 A | 7 | 100% |  |  |  | finish no earlier than 2007-12-14 | hatfieldj | 80h | 80h |
| 9 | 1.2 | **caArray website (zope site) update** |  | 52d? | 2007-11-14 A | 2008-01-25 A |  | 100% |  |  |  |  |  | 280h | 280h |
| 10 | 1.2.1 | Initial Content Change |  | 3d? | 2007-11-14 A | 2007-11-16 A |  | 100% |  |  |  | start no earlier than 2008-01-02 | klemmj | 24h | 24h |
| 11 | 1.2.2 | Format Change |  | 15d? | 2007-12-17 A | 2008-01-04 A |  | 100% |  |  |  | finish no earlier than 2008-01-04 | klemmj; mduncan | 240h | 240h |
| 12 | 1.2.3 | Release Content Change #1 to DEV |  | 2d? | 2007-12-13 A | 2007-12-14 A | 10 | 100% |  |  |  | finish no earlier than 2007-12-14 |  |  |  |
| 13 | 1.2.4 | Website Review #1 |  | 2d | 2007-12-17 A | 2007-12-18 A | 12 | 100% |  |  |  | start no earlier than 2007-12-17 |  |  |  |
| 14 | 1.2.5 | Content Update |  | 3d | 2007-12-19 A | 2007-12-21 A | 13 | 100% |  |  |  | start no earlier than 2007-12-19 |  |  |  |
| 15 | 1.2.6 | Release Content Change #2 to DEV |  | 2d? | 2007-12-26 A | 2007-12-27 A | 14 | 100% |  |  |  | finish no earlier than 2007-12-27 |  |  |  |
| 16 | 1.2.7 | Website Review #2 |  | 2d | 2008-01-03 A | 2008-01-04 A | 15 | 100% |  |  |  | start no earlier than 2008-01-03 |  |  |  |
| 17 | 1.2.8 | Website Approval |  | 1d? | 2008-01-07 A | 2008-01-07 A | 16 | 100% |  |  |  | start no earlier than 2008-01-07 |  |  |  |
| 18 | 1.2.9 | Milestone: Release Content to DEV | milestone | 0d | 2007-12-17 A | 2007-12-17 A | 10 | 100% |  |  |  | start no earlier than 2007-12-17 |  |  |  |
| 19 | 1.2.10 | Milestone: Release Content to QA | milestone | 0d | 2008-01-10 A | 2008-01-10 A | 17 | 100% |  |  |  | start no earlier than 2008-01-10 |  |  |  |
| 20 | 1.2.11 | Request content update - Stage |  | 1d? | 2008-01-14 A | 2008-01-14 A | 19 | 100% |  |  |  | start no earlier than 2008-01-14 | mduncan | 8h | 8h |
| 21 | 1.2.12 | Milestone: Release Content to Stage | milestone | 0d | 2008-01-16 A | 2008-01-16 A | 20 | 100% |  |  |  | start no earlier than 2008-01-16 |  |  |  |
| 22 | 1.2.13 | Request content update - Production |  | 1d? | 2008-01-21 A | 2008-01-21 A | 21 | 100% |  |  |  | start no earlier than 2008-01-21 | mduncan | 8h | 8h |
| 23 | 1.2.14 | Milestone: Release Content to PRODUCTION | milestone | 0d | 2008-01-25 A | 2008-01-25 A | 22 | 100% |  |  |  | start no earlier than 2008-01-25 |  |  |  |
| 24 | 1.3 | **Download Center Update** |  | 31d? | 2007-12-13 A | 2008-01-25 A |  | 100% |  |  |  |  |  | 112h | 112h |
| 25 | 1.3.1 | Update License Statement (reflect 2.0) |  | 2d? | 2007-12-13 A | 2007-12-14 A |  | 100% |  |  |  | finish no earlier than 2007-12-14 | mduncan | 16h | 16h |
| 26 | 1.3.2 | Website content change |  | 3d | 2007-12-13 A | 2007-12-17 A |  | 100% |  |  |  | finish no earlier than 2007-12-17 | mduncan | 24h | 24h |
| 27 | 1.3.3 | Add archives page (caArray 1.6 info) |  | 3d? | 2007-12-13 A | 2007-12-17 A |  | 100% |  |  |  | finish no earlier than 2007-12-17 | mduncan | 24h | 24h |
| 28 | 1.3.4 | Milestone: Release Content to DEV | milestone | 0d | 2007-12-19 A | 2007-12-19 A |  | 100% |  |  |  | start no earlier than 2007-12-19 |  |  |  |
| 29 | 1.3.5 | Site review on DEV |  | 1d? | 2007-12-20 A | 2007-12-20 A | 28 | 100% |  |  |  | finish no earlier than 2007-12-20 | klemmj | 8h | 8h |
| 30 | 1.3.6 | Request content update on QA |  | 1d? | 2008-01-08 A | 2008-01-08 A |  | 100% |  |  |  | start no earlier than 2008-01-08 | mduncan | 8h | 8h |
| 31 | 1.3.7 | Milestone: Release Content to QA | milestone | 0d | 2008-01-10 A | 2008-01-10 A | 30 | 100% |  |  |  | start no earlier than 2008-01-10 |  |  |  |
| 32 | 1.3.8 | Site review on QA |  | 1d? | 2008-01-11 A | 2008-01-11 A | 31 | 100% |  |  |  | start no earlier than 2008-01-11 | klemmj | 8h | 8h |
| 33 | 1.3.9 | Request content udpate on Stage |  | 1d? | 2008-01-14 A | 2008-01-14 A | 32 | 100% |  |  |  |  | mduncan | 8h | 8h |
| 34 | 1.3.10 | Milestone: Release Content to Stage | milestone | 0d | 2008-01-16 A | 2008-01-16 A | 33 | 100% |  |  |  | start no earlier than 2008-01-16 |  |  |  |
| 35 | 1.3.11 | Site review on Stage |  | 1d? | 2008-01-16 A | 2008-01-16 A | 34 | 100% |  |  |  |  | klemmj | 8h | 8h |
| 36 | 1.3.12 | Request content update to PROD |  | 1d? | 2008-01-21 A | 2008-01-21 A | 35 | 100% |  |  |  | start no earlier than 2008-01-21 | mduncan | 8h | 8h |
| 37 | 1.3.13 | Milestone: Release Content to PRODUCTION | milestone | 0d | 2008-01-25 A | 2008-01-25 A | 36 | 100% |  |  |  | start no earlier than 2008-01-25 |  |  |  |

| ID | WBS | Task | Duration | Start | Finish | Complete | Remaining | Total slack | Constraint | Resources | Work | Actual work |
| --- | --- | --- | --- | --- | --- | --- | --- | --- | --- | --- | --- | --- |
| 38 | 1.4 | **gForge Update** | 5d | 2008-01-21 A | 2008-01-25 A | 100% |  |  |  |  | 240h | 240h |
| 39 | 1.4.1 | Release documentation package to gForge | 5d | 2008-01-21 A | 2008-01-25 A | 100% |  |  | start no earlier than 2008-01-21 | bgendleman; mduncan | 80h | 80h |
| 40 | 1.4.2 | Release release notes to gForge | 5d | 2008-01-21 A | 2008-01-25 A | 100% |  |  | start no earlier than 2008-01-21 | bgendleman; mduncan | 80h | 80h |
| 41 | 1.4.3 | Release source file to gForge | 5d | 2008-01-21 A | 2008-01-25 A | 100% |  |  | start no earlier than 2008-01-21 | bgendleman; mduncan | 80h | 80h |
| 42 | 1.5 | Release Announcement to the Community | 9d? | 2008-01-14 A | 2008-01-25 | 100% | 0d? | 1d |  |  | 8h |  |
